Schedule from MS Project, 2008-09-01 to 2008-09-01.

## Calendars

- Стандартный: Mon-Thu 09:00-13:00, 14:00-18:15; Fri 09:00-13:00, 14:00-17:00; Sat-Sun off.

## Schedule

| ID | Task | Duration | Start | Finish | Total slack |
| --- | --- | --- | --- | --- | --- |
| 1 | Разработка ПО | 1d? | 2008-09-01 | 2008-09-01 | 0d |
| 2 | Постановка задачи | 1d? | 2008-09-01 | 2008-09-01 | 0d |
| 3 | Определение требований к ПО | 1d? | 2008-09-01 | 2008-09-01 | 0d |
| 4 | Определение функциональных требований | 1d? | 2008-09-01 | 2008-09-01 | 0d |
| 5 | Определение эксплуатационных требований | 1d? | 2008-09-01 | 2008-09-01 | 0d |
| 6 | Предпроектные исследования | 1d? | 2008-09-01 | 2008-09-01 | 0d |
| 7 | Разработка и утверждение технического | 1d? | 2008-09-01 | 2008-09-01 | 0d |
| 8 | Анализ требований и определение спецификации | 1d? | 2008-09-01 | 2008-09-01 | 0d |
| 9 | Анализ требований технического задания | 1d? | 2008-09-01 | 2008-09-01 | 0d |
| 10 | Выбор математического аппарата формализации | 1d? | 2008-09-01 | 2008-09-01 | 0d |
| 11 | Разработка модели предметной области | 1d? | 2008-09-01 | 2008-09-01 | 0d |
| 12 | Согласование и утверждение эскизного проекта | 1d? | 2008-09-01 | 2008-09-01 | 0d |
| 13 | Проектирование | 1d? | 2008-09-01 | 2008-09-01 | 0d |
| 14 | Проектирование общей структуры ПО | 1d? | 2008-09-01 | 2008-09-01 | 0d |
| 15 | Декомпозиция компонентов и построение структурных иерархий | 1d? | 2008-09-01 | 2008-09-01 | 0d |
| 16 | Проектирование компонентов | 1d? | 2008-09-01 | 2008-09-01 | 0d |
| 17 | Согласование и утверждение технического проекта | 1d? | 2008-09-01 | 2008-09-01 | 0d |
| 18 | Реализация | 1d? | 2008-09-01 | 2008-09-01 | 0d |
| 19 | Разработка программы | 1d? | 2008-09-01 | 2008-09-01 | 0d |
| 20 | Разработка программной документации | 1d? | 2008-09-01 | 2008-09-01 | 0d |
| 21 | Испытание программы | 1d? | 2008-09-01 | 2008-09-01 | 0d |
| 22 | Разработка методики тестирования | 1d? | 2008-09-01 | 2008-09-01 | 0d |
| 23 | Тестирование модулей | 1d? | 2008-09-01 | 2008-09-01 | 0d |
| 24 | Тестирование интеграции | 1d? | 2008-09-01 | 2008-09-01 | 0d |
| 25 | Согласование и утверждение рабочего проекта | 1d? | 2008-09-01 | 2008-09-01 | 0d |
| 26 | Внедрение | 1d? | 2008-09-01 | 2008-09-01 | 0d |
| 27 | Подготовка и передача ПО и программной документации для сопровождения | 1d? | 2008-09-01 | 2008-09-01 | 0d |
| 28 | Оформление и утверждение акта о передаче программы | 1d? | 2008-09-01 | 2008-09-01 | 0d |
| 29 | Обучение персонала | 1d? | 2008-09-01 | 2008-09-01 | 0d |
